# 项目管理

Schedule from MS Project, 2020-11-09 to 2020-12-22, costs in ¥.

## Calendars

- 标准: Mon-Fri 08:00-12:00, 13:00-17:00; Sat-Sun off.

## Resources

| Resource | Rate | Notes |
| --- | --- | --- |
| 谢婉琴 | 100 | 项目经理 程序员 |
| 田文秀 | 80 | UI专家 程序员 |
| 孟旭颖 | 80 | 设计专家 程序员 |
| 张荣 | 80 | 需求专家 程序员 |
| 刘雨宣 | 80 | 质量专家 程序员 |
| 李佳宁 | 80 | 测试员 程序员 |
| 电脑 | 200 |  |
| 测试设备 | 150 |  |
| 团队建设 |  |  |
| 间接成本 |  |  |
| 储备资金 |  |  |

## Schedule

| ID | WBS | Task | Type | Duration | Start | Finish | Predecessors | Total slack | Resources | Work | Cost | 间接成本 | 储备资金 |
| --- | --- | --- | --- | --- | --- | --- | --- | --- | --- | --- | --- | --- | --- |
| 1 | 1 | **研小陪** |  | 32d | 2020-11-09 | 2020-12-22 |  | 0d |  | 687.2h | 62,400 | ¥6,240.00 | ¥9,360.00 |
| 2 | 1.1 | **启动** |  | 3d | 2020-11-09 | 2020-11-11 |  |  |  | 128h | 10,880 | ¥1,088.00 | ¥1,632.00 |
| 3 | 1.1.1 | 组建核心团队 | milestone, manual | 1d | 2020-11-09 | 2020-11-09 |  |  | 田文秀; 孟旭颖; 张荣; 刘雨宣; 谢婉琴; 李佳宁 | 48h | 4,000 |  |  |
| 4 | 1.1.2 | 干系人分析 | manual | 1d | 2020-11-09 | 2020-11-09 |  |  | 谢婉琴 | 8h | 800 |  |  |
| 5 | 1.1.3 | 里程碑计划 | manual | 1d | 2020-11-10 | 2020-11-10 | 3, 4 |  | 谢婉琴 | 8h | 800 |  |  |
| 6 | 1.1.4 | 制定项目章程 | milestone, manual | 1d | 2020-11-10 | 2020-11-10 | 3, 4 |  | 田文秀; 孟旭颖; 张荣 | 24h | 1,920 |  |  |
| 7 | 1.1.5 | 项目启动大会 | milestone, manual | 1d | 2020-11-11 | 2020-11-11 | 6 |  | 刘雨宣; 孟旭颖; 田文秀; 谢婉琴; 张荣 | 40h | 3,360 |  |  |
| 8 | 1.2 | **规划** |  | 18d | 2020-11-12 | 2020-12-07 |  | 0d |  | 200h | 18,400 | ¥1,840.00 | ¥2,760.00 |
| 9 | 1.2.1 | **规划范围** |  | 4d | 2020-11-12 | 2020-11-17 |  |  |  | 48h | 4,320 |  |  |
| 10 | 1.2.1.1 | 制定需求说明书 | manual | 1d | 2020-11-12 | 2020-11-12 | 7 |  | 张荣 | 8h | 640 |  |  |
| 11 | 1.2.1.2 | 界面设计 | manual | 1d | 2020-11-13 | 2020-11-13 | 10 |  | 田文秀 | 8h | 640 |  |  |
| 12 | 1.2.1.3 | 详细设计说明书 | manual | 1d | 2020-11-13 | 2020-11-13 | 10 |  | 孟旭颖 | 8h | 640 |  |  |
| 13 | 1.2.1.4 | 项目范围说明书 | manual | 1d | 2020-11-13 | 2020-11-13 | 10 |  | 谢婉琴 | 8h | 800 |  |  |
| 14 | 1.2.1.5 | 创建WBS | manual | 1d | 2020-11-16 | 2020-11-16 | 11, 12, 13 |  | 谢婉琴 | 8h | 800 |  |  |
| 15 | 1.2.1.6 | 形成范围基准 | manual | 1d | 2020-11-17 | 2020-11-17 | 14 |  | 谢婉琴 | 8h | 800 |  |  |
| 16 | 1.2.2 | **规划时间** |  | 5d | 2020-11-18 | 2020-11-24 |  |  |  | 40h | 3,680 |  |  |
| 17 | 1.2.2.1 | 排列工作包顺序 | manual | 1d | 2020-11-18 | 2020-11-18 | 15 |  | 谢婉琴 | 8h | 800 |  |  |
| 18 | 1.2.2.2 | 估算资源 | manual | 1d | 2020-11-19 | 2020-11-19 | 17 |  | 李佳宁 | 8h | 640 |  |  |
| 19 | 1.2.2.3 | 估算持续时间 | manual | 1d | 2020-11-20 | 2020-11-20 | 18 |  | 刘雨宣 | 8h | 640 |  |  |
| 20 | 1.2.2.4 | 制定进度计划 | milestone, manual | 1d | 2020-11-23 | 2020-11-23 | 19 |  | 谢婉琴 | 8h | 800 |  |  |
| 21 | 1.2.2.5 | 形成进度基准 | milestone, manual | 1d | 2020-11-24 | 2020-11-24 | 20 |  | 谢婉琴 | 8h | 800 |  |  |
| 22 | 1.2.3 | **规划成本** |  | 3d | 2020-11-25 | 2020-11-27 |  |  |  | 24h | 2,400 |  |  |
| 23 | 1.2.3.1 | 项目成本估算 | manual | 1d | 2020-11-25 | 2020-11-25 | 21 |  | 谢婉琴 | 8h | 800 |  |  |
| 24 | 1.2.3.2 | 项目预算 | manual | 1d | 2020-11-26 | 2020-11-26 | 23 |  | 谢婉琴 | 8h | 800 |  |  |
| 25 | 1.2.3.3 | 形成范围基准 | manual | 1d | 2020-11-27 | 2020-11-27 | 24 |  | 谢婉琴 | 8h | 800 |  |  |

| ID | WBS | Task | Type | Duration | Start | Finish | Predecessors | Total slack | Resources | Work | Cost | 间接成本 | 储备资金 |
| --- | --- | --- | --- | --- | --- | --- | --- | --- | --- | --- | --- | --- | --- |
| 26 | 1.2.4 | **规划质量** |  | 2d | 2020-11-30 | 2020-12-01 |  | 0d |  | 16h | 1,280 |  |  |
| 27 | 1.2.4.1 | 制定测试计划 | manual | 1d | 2020-11-30 | 2020-11-30 | 25 |  | 刘雨宣 | 8h | 640 |  |  |
| 28 | 1.2.4.2 | 制定测试用例 | manual | 1d | 2020-12-01 | 2020-12-01 | 27 |  | 刘雨宣 | 8h | 640 |  |  |
| 29 | 1.2.5 | **规划人力资源** |  | 2d | 2020-11-18 | 2020-11-19 |  |  |  | 16h | 1,280 |  |  |
| 30 | 1.2.5.1 | 制定人力资源计划 | manual | 1d | 2020-11-18 | 2020-11-18 | 15 |  | 田文秀 | 8h | 640 |  |  |
| 31 | 1.2.5.2 | 制定人员配备管理计划 | manual | 1d | 2020-11-19 | 2020-11-19 | 30 |  | 张荣 | 8h | 640 |  |  |
| 32 | 1.2.6 | **规划沟通** |  | 1d | 2020-11-20 | 2020-11-20 |  |  |  | 8h | 800 |  |  |
| 33 | 1.2.6.1 | 制定沟通管理计划 | manual | 1d | 2020-11-20 | 2020-11-20 | 31 |  | 谢婉琴 | 8h | 800 |  |  |
| 34 | 1.2.7 | **规划采购** |  | 2d | 2020-11-18 | 2020-11-19 |  |  |  | 16h | 1,440 |  |  |
| 35 | 1.2.7.1 | 自制外购分析 | manual | 1d | 2020-11-18 | 2020-11-18 | 15 |  | 孟旭颖 | 8h | 640 |  |  |
| 36 | 1.2.7.2 | 制定采购文件 | manual | 1d | 2020-11-19 | 2020-11-19 | 30 |  | 谢婉琴 | 8h | 800 |  |  |
| 37 | 1.2.8 | **规划风险** |  | 3d | 2020-12-02 | 2020-12-04 |  | 0d |  | 24h | 2,400 |  |  |
| 38 | 1.2.8.1 | 识别风险 | manual | 1d | 2020-12-02 | 2020-12-02 | 16, 22, 29, 26 |  | 谢婉琴 | 8h | 800 |  |  |
| 39 | 1.2.8.2 | 风险分析 | manual | 1d | 2020-12-03 | 2020-12-03 | 38 |  | 谢婉琴 | 8h | 800 |  |  |
| 40 | 1.2.8.3 | 制定风险登记册 | manual | 1d | 2020-12-04 | 2020-12-04 | 39 |  | 谢婉琴 | 8h | 800 |  |  |
| 41 | 1.2.9 | 规划整合 | manual | 1d | 2020-12-07 | 2020-12-07 | 40 |  | 谢婉琴 | 8h | 800 |  |  |
| 42 | 1.3 | **执行与监控** |  | 9d | 2020-12-09 | 2020-12-21 |  |  |  | 309.6h | 28,960 | ¥2,896.00 | ¥4,344.00 |
| 43 | 1.3.1 | 组建团队项目 | manual | 1d | 2020-12-08 | 2020-12-08 | 41 |  | 李佳宁; 谢婉琴 | 16h | 1,440 |  |  |
| 44 | 1.3.2 | **项目执行** |  | 7d | 2020-12-10 | 2020-12-18 |  |  |  | 112h | 12,240 | ¥1,224.00 | ¥1,224.00 |
| 45 | 1.3.2.1 | **用户模块** |  | 7d | 2020-12-10 | 2020-12-18 |  |  |  | 64h | 6,880 |  |  |
| 46 | 1.3.2.1.1 | 注册登录 | manual | 1d | 2020-12-10 | 2020-12-10 | 43 |  | 刘雨宣; 电脑 | 8h | 840 |  |  |
| 47 | 1.3.2.1.2 | 音乐播放 | manual | 1d | 2020-12-11 | 2020-12-11 | 43 |  | 李佳宁; 电脑 | 8h | 840 |  |  |
| 48 | 1.3.2.1.3 | 题库信息 | manual | 1d | 2020-12-15 | 2020-12-15 | 43 |  | 孟旭颖; 电脑 | 8h | 840 |  |  |
| 49 | 1.3.2.1.4 | 学校信息搜索 | manual | 1d | 2020-12-11 | 2020-12-11 | 43 |  | 田文秀; 电脑 | 8h | 840 |  |  |
| 50 | 1.3.2.1.5 | 个人信息设置 | manual | 1d | 2020-12-14 | 2020-12-14 | 43 |  | 刘雨宣; 谢婉琴; 电脑 [200%] | 16h | 1,840 |  |  |
| 51 | 1.3.2.1.6 | 首页 | manual | 1d | 2020-12-11 | 2020-12-11 | 46 |  | 刘雨宣; 电脑 | 8h | 840 |  |  |
| 52 | 1.3.2.1.7 | 设置计划 | manual | 1d | 2020-12-16 | 2020-12-16 | 43 |  | 张荣; 电脑 | 8h | 840 |  |  |

| ID | WBS | Task | Type | Duration | Start | Finish | Predecessors | Resources | Work | Cost | 间接成本 | 储备资金 |
| --- | --- | --- | --- | --- | --- | --- | --- | --- | --- | --- | --- | --- |
| 53 | 1.3.2.2 | **管理员模块** |  | 5d | 2020-12-10 | 2020-12-16 |  |  | 48h | 5,360 |  |  |
| 54 | 1.3.2.2.1 | 用户信息管理 | manual | 1d | 2020-12-11 | 2020-12-11 | 46 | 谢婉琴; 电脑 | 8h | 1,000 |  |  |
| 55 | 1.3.2.2.2 | 音乐管理 | manual | 1d | 2020-12-14 | 2020-12-14 | 47 | 李佳宁; 电脑 | 8h | 840 |  |  |
| 56 | 1.3.2.2.3 | 题库更新维护 | manual | 1d | 2020-12-16 | 2020-12-16 | 48 | 孟旭颖; 电脑 | 8h | 840 |  |  |
| 57 | 1.3.2.2.4 | 学校信息更新维护 | manual | 1d | 2020-12-14 | 2020-12-14 | 49 | 田文秀; 电脑 | 8h | 840 |  |  |
| 58 | 1.3.2.2.5 | 个性装扮管理 | manual | 1d | 2020-12-15 | 2020-12-15 | 57 | 刘雨宣; 电脑 | 8h | 840 |  |  |
| 59 | 1.3.2.2.6 | 备份 | manual | 1d | 2020-12-16 | 2020-12-16 | 58 | 谢婉琴; 电脑 | 8h | 1,000 |  |  |
| 60 | 1.3.3 | **项目监控** |  | 3d | 2020-12-17 | 2020-12-19 |  |  | 65.6h | 5,280 |  |  |
| 61 | 1.3.3.1 | 各项指标监控 | manual | 1d | 2020-12-17 | 2020-12-17 | 43 | 李佳宁 | 8h | 640 |  |  |
| 62 | 1.3.3.2 | 监控审评 | manual | 1d | 2020-12-17 | 2020-12-17 |  | 刘雨宣 | 8h | 640 |  |  |
| 63 | 1.3.3.3 | 变更审评 | manual | 1d | 2020-12-18 | 2020-12-18 | 62 | 张荣 | 8h | 640 |  |  |
| 64 | 1.3.3.4 | 例会 | manual | 1d | 2020-12-19 | 2020-12-19 | 43 | 田文秀; 李佳宁; 孟旭颖; 谢婉琴 [20%]; 张荣; 刘雨宣 | 41.6h | 3,360 |  |  |
| 65 | 1.3.4 | **管理干系人** |  | 1d | 2020-12-20 | 2020-12-20 |  |  | 36h | 3,120 |  |  |
| 66 | 1.3.4.1 | 发布项目信息 | manual | 1d | 2020-12-20 | 2020-12-20 | 43 | 谢婉琴 [50%]; 李佳宁 | 12h | 1,040 |  |  |
| 67 | 1.3.4.2 | 报告监控指标 | manual | 1d | 2020-12-20 | 2020-12-20 | 43 | 孟旭颖; 谢婉琴 [50%] | 12h | 1,040 |  |  |
| 68 | 1.3.4.3 | 干系人沟通 | manual | 1d | 2020-12-20 | 2020-12-20 | 43 | 田文秀; 谢婉琴 [50%] | 12h | 1,040 |  |  |
| 69 | 1.3.5 | **团建活动** |  | 1d | 2020-12-17 | 2020-12-17 |  |  | 32h | 2,720 |  |  |
| 70 | 1.3.5.1 | 培训 | manual | 1d | 2020-12-17 | 2020-12-17 | 59 | 孟旭颖 | 8h | 640 |  |  |
| 71 | 1.3.5.2 | 娱乐活动 | manual | 1d | 2020-12-17 | 2020-12-17 | 59 | 田文秀; 张荣 | 16h | 1,280 |  |  |
| 72 | 1.3.5.3 | 沟通 | manual | 1d | 2020-12-17 | 2020-12-17 | 59 | 谢婉琴 | 8h | 800 |  |  |
| 73 | 1.3.6 | 采购 | manual | 1d | 2020-12-18 | 2020-12-18 | 72 | 谢婉琴 | 8h | 800 |  |  |
| 74 | 1.3.7 | 项目验收 | milestone, manual | 1d | 2020-12-21 | 2020-12-21 | 73 | 田文秀; 孟旭颖; 谢婉琴; 张荣; 刘雨宣 | 40h | 3,360 |  |  |
| 75 | 1.4 | **收尾** |  | 1d | 2020-12-22 | 2020-12-22 |  |  | 49.6h | 4,160 | ¥416.00 | ¥624.00 |
| 76 | 1.4.1 | 项目终验 | milestone, manual | 1d | 2020-12-22 | 2020-12-22 | 74 | 田文秀; 孟旭颖; 谢婉琴 [20%]; 张荣; 刘雨宣 | 33.6h | 2,720 |  |  |
| 77 | 1.4.2 | 结束采购 | manual | 1d | 2020-12-22 | 2020-12-22 | 74 | 谢婉琴 | 8h | 800 |  |  |
| 78 | 1.4.3 | 项目内部收尾 | manual | 1d | 2020-12-22 | 2020-12-22 | 74 | 李佳宁 | 8h | 640 |  |  |
